# Children's book schedule

Schedule from MS Project, 2015-04-06 to 2016-02-26, costs in $, A marks actual dates.
Lucerne Publishing

## Calendars

- Standard: Mon-Fri 08:00-12:00, 13:00-17:00; Sat-Sun off.
- Monday-Wednesday: Mon-Wed 08:00-12:00, 13:00-17:00; Thu-Sun off.

## Resources

| Resource | Rate | Notes |
| --- | --- | --- |
| Carole Poland | 52.5 |  |
| Color Setting Services |  |  |
| Copyeditors | 45 |  |
| Dan Jump | 75.5 |  |
| Hany Morcos | 38.75 |  |
| Jane Dow | 55 |  |
| John Evans | 69.5 |  |
| Jun Cao | 42 |  |
| Katie Jordan | 48 |  |
| Luis Sousa | 70 |  |
| Printing Service |  |  |
| Robin Wood | 44 |  |
| Sharon Salavaria | 27.5 | Sharon's standard pay rate is adjusted for her half-time work schedule. |
| Tad Orman |  |  |
| Toby Nixon | 67.5 | Toby worked on launch campaigns for Toni Poe's previous two books. |
| Travel |  |  |
| Vikas Jain | 22 |  |
| William Flash |  |  |
| Zac Woodall | 55 |  |

## Schedule

| ID | WBS | Task | Type | Duration | Start | Finish | Predecessors | Complete | Remaining | Total slack | Constraint | Resources | Work | Actual work | Cost | Actual cost |
| --- | --- | --- | --- | --- | --- | --- | --- | --- | --- | --- | --- | --- | --- | --- | --- | --- |
| 1 | 1 | **Acquisition** |  | 28d | 2015-04-06 | 2015-05-14 |  |  |  | 0d |  |  | 220h |  | 7,200 |  |
| 2 | 1.1 | Manuscript received | milestone, manual | 0d | 2015-04-06 | 2015-04-06 |  |  |  |  |  |  |  |  |  |  |
| 3 | 1.2 | Content edit | manual | 15d | 2015-04-06 | 2015-04-29 | 2 |  |  |  |  | Carole Poland | 120h |  | 6,300 |  |
| 4 | 1.3 | Author review of content edit | manual | 10d | 2015-04-30 | 2015-05-13 | 3 |  |  |  |  | Tad Orman; Copyeditors [25%] | 100h |  | 900 |  |
| 5 | 1.4 | Handoff to Editorial | milestone, manual | 0d | 2015-05-14 | 2015-05-14 | 4 |  |  |  |  | Carole Poland |  |  |  |  |
| 6 | 2 | **Editorial** |  | 37d | 2015-08-28 A | 2015-10-20 | 1 | 3% | 36.06d | 0d |  |  | 420h | 8h | 14,800 | 310 |
| 7 | 2.1 | Organize manuscript for copyedit | manual | 4.5d | 2015-08-28 A | 2015-09-03 |  | 22% | 3.5d |  |  | Hany Morcos | 40h | 8h | 1,550 | 310 |
| 8 | 2.2 | Copyedit | manual | 20d | 2015-09-03 | 2015-10-01 | 7 |  |  |  |  | Copyeditors [150%] | 240h |  | 10,800 |  |
| 9 | 2.3 | Author review of copyedit | manual | 10d | 2015-10-01 | 2015-10-15 | 8 |  |  |  |  | Tad Orman; Copyeditors [25%] | 100h |  | 900 |  |
| 10 | 2.4 | Copyedit incorp | manual | 5d | 2015-10-13 | 2015-10-19 | 9FS-2.5% |  |  |  |  | Hany Morcos | 40h |  | 1,550 |  |
| 11 | 2.5 | Handoff to Production | milestone, manual | 0d | 2015-10-20 | 2015-10-20 | 10 |  |  |  |  | Hany Morcos |  |  |  |  |
| 12 | 3 | **Design and Production** |  | 50d | 2015-10-20 | 2015-12-28 | 6 |  |  | 0d |  |  | 676h |  | 32,650 |  |
| 13 | 3.1 | Set pages | manual | 15d | 2015-10-20 | 2015-11-09 |  |  |  |  |  | Jane Dow | 120h |  | 6,600 |  |
| 14 | 3.2 | Interior illustration design | manual | 15d | 2015-10-20 | 2015-11-09 | 13SS |  |  |  |  | Luis Sousa | 120h |  | 8,400 |  |
| 15 | 3.3 | **1st Pages review** |  | 25d | 2015-11-10 | 2015-12-14 | 14 |  |  | 0d |  |  | 220h |  | 7,450 |  |
| 16 | 3.3.1 | Proofread and index | manual | 10d | 2015-11-10 | 2015-11-23 |  |  |  |  | start no earlier than 2015-07-17 | Tad Orman; Copyeditors | 100h |  | 900 |  |
| 17 | 3.3.2 | Incorporate 1st Pages review | manual | 5d | 2015-11-24 | 2015-11-30 | 16 |  |  |  |  | Hany Morcos | 40h |  | 1,550 |  |
| 18 | 3.3.3 | Send proofed pages to Production | milestone, manual | 0d | 2015-12-01 | 2015-12-01 | 17 |  |  |  |  | Hany Morcos |  |  |  |  |
| 19 | 3.3.4 | Enter page corrections and index | manual | 5d | 2015-12-01 | 2015-12-07 | 18 |  |  |  |  | Jane Dow | 40h |  | 2,200 |  |
| 20 | 3.3.5 | Cover design | manual | 5d | 2015-12-08 | 2015-12-14 | 19 |  |  |  |  | Luis Sousa | 40h |  | 2,800 |  |
| 21 | 3.4 | **2nd Pages review** |  | 10d | 2015-12-15 | 2015-12-28 |  |  |  | 0d |  |  | 160h |  | 7,400 |  |
| 22 | 3.4.1 | Proof and review | manual | 5d | 2015-12-15 | 2015-12-21 | 20 |  |  |  |  | Hany Morcos | 40h |  | 1,550 |  |
| 23 | 3.4.2 | Send proofed pages to Production | milestone, manual | 0d | 2015-12-22 | 2015-12-22 | 22 |  |  |  |  | Hany Morcos |  |  |  |  |
| 24 | 3.4.3 | Final review | manual | 5d | 2015-12-22 | 2015-12-28 | 23 |  |  |  |  | Jane Dow; Hany Morcos; Carole Poland | 120h |  | 5,850 |  |

| ID | WBS | Task | Type | Duration | Start | Finish | Predecessors | Total slack | Calendar | Resources | Work | Cost |
| --- | --- | --- | --- | --- | --- | --- | --- | --- | --- | --- | --- | --- |
| 25 | 3.5 | **Design book's companion website** |  | 5d | 2015-12-15 | 2015-12-21 |  | 0d |  |  | 56h | 2,800 |
| 26 | 3.5.1 | Create mockup | manual | 3d | 2015-12-15 | 2015-12-17 | 20 |  |  | Luis Sousa | 24h | 1,680 |
| 27 | 3.5.2 | Review with author | manual | 2d | 2015-12-18 | 2015-12-21 | 26 |  |  | Luis Sousa; Tad Orman | 32h | 1,120 |
| 28 | 4 | **Color prep and printing** |  | 44d | 2015-12-29 | 2016-02-26 |  | 0d |  |  | 328h | 310 |
| 29 | 4.1 | Send to color house | manual | 1d | 2015-12-29 | 2015-12-29 | 24, 27 |  | Monday-Wednesday | Hany Morcos | 8h | 310 |
| 30 | 4.2 | Generate proofs | manual | 10d | 2015-12-30 | 2016-01-12 | 29 |  |  | Color Setting Services | 80h |  |
| 31 | 4.3 | Print and ship | manual | 30d | 2016-01-18 | 2016-02-26 | 30FS+3d |  |  | Printing Service | 240h |  |
